# CFS

Schedule from MS Project XML, 2012-09-10 to 2012-11-15.

## Calendars

- Standard: Mon-Fri 08:00-12:00, 13:00-17:00; Sat-Sun off. Exceptions (off unless hours are given): 2012-09-29 to 2012-10-05.

## Resources

| Resource |
| --- |
| Unassigned |

## Schedule

| ID | WBS | Task | Duration | Start | Finish | Predecessors | Total slack | Free slack |
| --- | --- | --- | --- | --- | --- | --- | --- | --- |
| 1 | 1 | **企业资信评估与财务指标分析系统** | 44d | 2012-09-10 | 2012-11-15 |  | 0d |  |
| 2 | 1.1 | **财务报表资料收集** | 10d | 2012-09-10 | 2012-09-21 |  | 3400d | 0d |
| 3 | 1.1.1 | **软件需求与规格** | 3d | 2012-09-10 | 2012-09-12 |  | 0d |  |
| 4 | 1.1.1.1 | 编写软件需求规格书 | 3d | 2012-09-10 | 2012-09-12 |  | 0d |  |
| 5 | 1.1.1.2 | 评审 | 0d | 2012-09-12 | 2012-09-12 | 4 | 0d |  |
| 6 | 1.1.2 | **系统设计** | 2d | 2012-09-13 | 2012-09-14 | 3 | 0d |  |
| 7 | 1.1.2.1 | 设计文档 | 1d | 2012-09-13 | 2012-09-13 |  | 0d |  |
| 8 | 1.1.2.2 | 数据库模型 | 1d | 2012-09-14 | 2012-09-14 | 7 | 0d |  |
| 9 | 1.1.2.3 | 评审 | 0d | 2012-09-14 | 2012-09-14 | 8 | 0d |  |
| 10 | 1.1.3 | **编码** | 3d | 2012-09-17 | 2012-09-19 | 6 | 3400d | 0d |
| 11 | 1.1.3.1 | 资产负债表 | 3d | 2012-09-17 | 2012-09-19 |  | 3400d | 0d |
| 12 | 1.1.3.2 | 利润及利润分配表 | 3d | 2012-09-17 | 2012-09-19 |  | 3400d | 0d |
| 13 | 1.1.3.3 | 现金流量表 | 3d | 2012-09-17 | 2012-09-19 |  | 3400d | 0d |
| 14 | 1.1.4 | **测试** | 5d | 2012-09-17 | 2012-09-21 |  | 3400d | 0d |
| 15 | 1.1.4.1 | 测试用例 | 3d | 2012-09-17 | 2012-09-19 | 6 | 3400d | 0d |
| 16 | 1.1.4.2 | **单元测试** | 1d | 2012-09-20 | 2012-09-20 | 15 | 3400d | 0d |
| 17 | 1.1.4.2.1 | 资产负债表 | 1d | 2012-09-20 | 2012-09-20 | 11 | 3400d | 0d |
| 18 | 1.1.4.2.2 | 利润及利润分配表 | 1d | 2012-09-20 | 2012-09-20 | 12 | 3400d | 0d |
| 19 | 1.1.4.2.3 | 现金流量表 | 1d | 2012-09-20 | 2012-09-20 | 13 | 3400d | 0d |
| 20 | 1.1.4.3 | **集成测试** | 1d | 2012-09-21 | 2012-09-21 |  | 3400d | 0d |
| 21 | 1.1.4.3.1 | 测试报告 | 1d | 2012-09-21 | 2012-09-21 | 16 | 3400d | 0d |
| 22 | 1.2 | **财务指标分析** | 24d | 2012-09-17 | 2012-10-25 |  | 0d |  |
| 23 | 1.2.1 | **软件需求与规格** | 3d | 2012-09-17 | 2012-09-19 | 6 | 0d |  |
| 24 | 1.2.1.1 | 编写软件需求规格书 | 3d | 2012-09-17 | 2012-09-19 |  | 0d |  |
| 25 | 1.2.1.2 | 评审 | 0d | 2012-09-19 | 2012-09-19 | 24 | 0d |  |

| ID | WBS | Task | Duration | Start | Finish | Predecessors | Total slack | Free slack |
| --- | --- | --- | --- | --- | --- | --- | --- | --- |
| 26 | 1.2.2 | **系统设计** | 2d | 2012-09-20 | 2012-09-21 | 23 | 0d |  |
| 27 | 1.2.2.1 | 设计文档 | 1d | 2012-09-20 | 2012-09-20 |  | 0d |  |
| 28 | 1.2.2.2 | 数据库模型 | 1d | 2012-09-21 | 2012-09-21 | 27 | 0d |  |
| 29 | 1.2.2.3 | 评审 | 0d | 2012-09-21 | 2012-09-21 | 28 | 0d |  |
| 30 | 1.2.3 | **编码** | 3d | 2012-09-24 | 2012-09-26 | 26 | 0d |  |
| 31 | 1.2.3.1 | 偿债能力指标 | 3d | 2012-09-24 | 2012-09-26 |  | 0d |  |
| 32 | 1.2.3.2 | 运营能力指标 | 3d | 2012-09-24 | 2012-09-26 |  | 0d |  |
| 33 | 1.2.3.3 | 获利能力指标 | 3d | 2012-09-24 | 2012-09-26 |  | 0d |  |
| 34 | 1.2.3.4 | 发展能力指标 | 3d | 2012-09-24 | 2012-09-26 |  | 0d |  |
| 35 | 1.2.3.5 | 现金流量分析 | 3d | 2012-09-24 | 2012-09-26 |  | 0d |  |
| 36 | 1.2.3.6 | 综合指标 | 3d | 2012-09-24 | 2012-09-26 |  | 0d |  |
| 37 | 1.2.3.7 | 财务分析指标汇总表 | 3d | 2012-09-24 | 2012-09-26 |  | 0d |  |
| 38 | 1.2.4 | **测试** | 5d | 2012-09-24 | 2012-09-28 |  | 1400d | 0d |
| 39 | 1.2.4.1 | 测试用例 | 5d | 2012-09-24 | 2012-09-28 | 26 | 1400d | 0d |
| 40 | 1.2.5 | **单元测试** | 14d | 2012-09-27 | 2012-10-23 | 30 | 0d |  |
| 41 | 1.2.5.1 | 偿债能力指标 | 2d | 2012-09-27 | 2012-09-28 |  | 0d |  |
| 42 | 1.2.5.2 | 运营能力指标 | 2d | 2012-10-08 | 2012-10-09 | 41 | 0d |  |
| 43 | 1.2.5.3 | 获利能力指标 | 2d | 2012-10-10 | 2012-10-11 | 42 | 0d |  |
| 44 | 1.2.5.4 | 发展能力指标 | 2d | 2012-10-12 | 2012-10-15 | 43 | 0d |  |
| 45 | 1.2.5.5 | 现金流量分析 | 2d | 2012-10-16 | 2012-10-17 | 44 | 0d |  |
| 46 | 1.2.5.6 | 综合指标 | 2d | 2012-10-18 | 2012-10-19 | 45 | 0d |  |
| 47 | 1.2.5.7 | 财务分析指标汇总表 | 2d | 2012-10-22 | 2012-10-23 | 46 | 0d |  |
| 48 | 1.2.6 | **集成测试** | 2d | 2012-10-24 | 2012-10-25 | 40 | 0d |  |
| 49 | 1.2.6.1 | 测试报告 | 2d | 2012-10-24 | 2012-10-25 |  | 0d |  |

| ID | WBS | Task | Duration | Start | Finish | Predecessors | Total slack | Free slack |
| --- | --- | --- | --- | --- | --- | --- | --- | --- |
| 50 | 1.3 | **企业资信评估** | 15d | 2012-10-26 | 2012-11-15 | 22 | 0d |  |
| 51 | 1.3.1 | **软件需求与规格** | 3d | 2012-10-26 | 2012-10-30 | 26 | 500d | 0d |
| 52 | 1.3.1.1 | 编写软件需求规格书 | 3d | 2012-10-26 | 2012-10-30 |  | 500d | 0d |
| 53 | 1.3.1.2 | 评审 | 0d | 2012-10-30 | 2012-10-30 | 52 | 500d | 0d |
| 54 | 1.3.2 | **系统设计** | 4d | 2012-10-31 | 2012-11-05 | 51 | 500d | 0d |
| 55 | 1.3.2.1 | 设计文档 | 2d | 2012-10-31 | 2012-11-01 |  | 500d | 0d |
| 56 | 1.3.2.2 | 数据库模型 | 2d | 2012-11-02 | 2012-11-05 | 55 | 500d | 0d |
| 57 | 1.3.2.3 | 评审 | 0d | 2012-11-05 | 2012-11-05 | 56 | 500d | 0d |
| 58 | 1.3.3 | **编码** | 8d | 2012-10-26 | 2012-11-06 | 30 | 0d |  |
| 59 | 1.3.3.1 | 评估指标的设定 | 3d | 2012-10-26 | 2012-10-30 |  | 0d |  |
| 60 | 1.3.3.2 | 评估指标的填写 | 3d | 2012-10-31 | 2012-11-02 | 59 | 0d |  |
| 61 | 1.3.3.3 | 分值计算 | 2d | 2012-11-05 | 2012-11-06 | 60 | 0d |  |
| 62 | 1.3.4 | **测试** | 8d | 2012-11-06 | 2012-11-15 |  | 0d |  |
| 63 | 1.3.4.1 | 测试用例 | 3d | 2012-11-06 | 2012-11-08 | 54 | 500d | 0d |
| 64 | 1.3.4.2 | **单元测试** | 6d | 2012-11-07 | 2012-11-14 | 58 | 0d |  |
| 65 | 1.3.4.2.1 | 评估指标的设定 | 2d | 2012-11-07 | 2012-11-08 |  | 0d |  |
| 66 | 1.3.4.2.2 | 评估指标的填写 | 2d | 2012-11-09 | 2012-11-12 | 65 | 0d |  |
| 67 | 1.3.4.2.3 | 分值计算 | 2d | 2012-11-13 | 2012-11-14 | 66 | 0d |  |
| 68 | 1.3.4.3 | **集成测试** | 1d | 2012-11-15 | 2012-11-15 | 64 | 0d |  |
| 69 | 1.3.4.3.1 | 测试报告 | 1d | 2012-11-15 | 2012-11-15 |  | 0d |  |
